# memristive CPG

Schedule from GanttProject, 2023-12-01 to 2024-11-18, baseline: rainy.
Holidays every year on 01-01, 01-02, 01-03, 01-04, 01-05, 01-07, 02-15, 02-16, 05-01, 05-02, 11-11, 12-20, 12-21, 12-22, 12-23, 12-24, 12-25, 12-26, 12-27, 12-28, 12-29, 12-30, 12-31

## Calendars

- Project calendar: Mon-Fri working; Sat-Sun off. Exceptions (off unless hours are given): 2024-02-10 (Chinese NY).

## Schedule

| ID | WBS | Task | Type | Duration | Start | Finish | Predecessors | Complete | Baseline start | Baseline finish | Baseline duration |
| --- | --- | --- | --- | --- | --- | --- | --- | --- | --- | --- | --- |
| 1 | 1 | **B-model** |  | 51d | 2023-12-01 | 2024-03-01 |  | 12% | 2023-12-01 | 2024-03-05 | 53d |
| 2 | 1.1 | Ia STDP fix |  | 15d | 2023-12-01 | 2024-01-09 |  | 40% | 2023-12-01 | 2024-01-09 | 15d |
| 3 | 1.2 | Ia->F, E STDP |  | 3d | 2024-01-10 | 2024-01-12 | 2 | 10% | 2024-01-02 | 2024-01-10 | 3d |
| 4 | 1.3 | BS->F, E STDP |  | 2d | 2024-01-10 | 2024-01-11 | 2 | 10% | 2024-01-05 | 2024-01-09 | 2d |
| 5 | 1.4 | Cut STDP fix |  | 7d | 2024-01-15 | 2024-01-23 | 3, 4 | 1% | 2023-12-22 | 2024-01-16 | 7d |
| 6 | 1.5 | + 2nd leg |  | 2d | 2024-01-24 | 2024-01-25 | 4, 5 |  | 2024-01-09 | 2024-01-10 | 2d |
| 7 | 1.6 | Commisural Projections |  | 2d | 2024-01-26 | 2024-01-29 | 6 |  | 2024-01-11 | 2024-01-12 | 2d |
| 8 | 1.7 | Balance 2 legs |  | 2d | 2024-01-30 | 2024-01-31 | 7 |  | 2024-01-15 | 2024-01-16 | 2d |
| 9 | 1.8 | Debug 2 legs |  | 10d | 2024-02-01 | 2024-02-14 | 8 |  | 2024-01-17 | 2024-01-30 | 10d |
| 10 | 1.9 | Debug STDP complete model |  | 10d | 2024-02-19 | 2024-03-01 | 9 |  | 2024-01-31 | 2024-02-13 | 10d |
| 11 | 1.10 | Complete B-model | milestone | 0d | 2024-03-04 | 2024-03-04 | 10 |  | 2024-02-14 | 2024-02-14 | 0d |
| 12 | 2 | **Memristive devices** |  | 90d | 2023-12-06 | 2024-04-30 |  | 1% |  |  |  |
| 13 | 2.1 | buy silver |  | 10d | 2023-12-06 | 2023-12-19 |  | 10% |  |  |  |
| 14 | 2.2 | fabricate 1 mem |  | 5d | 2024-01-08 | 2024-01-12 | 13 |  |  |  |  |
| 15 | 2.3 | test 1 mem |  | 10d | 2024-01-15 | 2024-01-26 | 14 |  |  |  |  |
| 16 | 2.4 | fabricate 8 mem E |  | 10d | 2024-01-29 | 2024-02-09 | 15 |  |  |  |  |
| 17 | 2.5 | test 8 mem E |  | 10d | 2024-02-12 | 2024-02-27 | 16 |  |  |  |  |
| 18 | 2.6 | fubricate + 12 mems |  | 10d | 2024-02-28 | 2024-03-12 | 17 |  |  |  |  |
| 19 | 2.7 | 20 mems test F+E |  | 10d | 2024-03-13 | 2024-03-26 | 18 |  |  |  |  |
| 20 | 2.8 | fubricate 40 mems |  | 10d | 2024-03-27 | 2024-04-09 | 19 |  |  |  |  |
| 21 | 2.9 | test 40 mems |  | 15d | 2024-04-10 | 2024-04-30 | 20 |  |  |  |  |
| 22 | 2.10 | 40 mems (2 legs) | milestone | 0d | 2024-05-03 | 2024-05-03 | 21 |  |  |  |  |
| 23 | 3 | **Mem neurons** |  | 135d | 2023-12-01 | 2024-07-01 |  |  |  |  |  |
| 24 | 3.1 | negotiate mem 1 parameters |  | 1d | 2023-12-01 | 2023-12-01 |  | 100% |  |  |  |
| 25 | 3.2 | test task |  | 10d | 2023-12-04 | 2023-12-15 | 24 | 1% |  |  |  |
| 26 | 3.3 | negotiate mem 2 parameters |  | 1d | 2024-01-15 | 2024-01-15 | 14, 24, 25 |  |  |  |  |
| 27 | 3.4 | Rework mem neurons schematic |  | 10d | 2024-01-16 | 2024-01-29 | 26 | 1% |  |  |  |
| 28 | 3.5 | Design PCB E neurons |  | 7d | 2024-01-30 | 2024-02-07 | 27 |  |  |  |  |
| 29 | 3.6 | Design PCB F neurons |  | 7d | 2024-02-08 | 2024-02-20 | 28 |  |  |  |  |
| 30 | 3.7 | Design PCB InE, InF |  | 5d | 2024-02-21 | 2024-02-27 | 29 |  |  |  |  |
| 31 | 3.8 | Design PCB 2nd leg |  | 10d | 2024-02-28 | 2024-03-12 | 30 |  |  |  |  |
| 32 | 3.9 | Simulation |  | 2d | 2024-03-13 | 2024-03-14 | 31 |  |  |  |  |
| 33 | 3.10 | Order 1st PCBs |  | 10d | 2024-03-15 | 2024-03-28 | 32 |  |  |  |  |
| 34 | 3.11 | Delivery 1st PCBs |  | 15d | 2024-03-29 | 2024-04-18 | 33 |  |  |  |  |
| 35 | 3.12 | Solder 1st PCBs |  | 20d | 2024-04-19 | 2024-05-20 | 34 |  |  |  |  |
| 36 | 3.13 | Redesign PCBs |  | 5d | 2024-05-21 | 2024-05-27 | 35 |  |  |  |  |
| 37 | 3.14 | Order 2nd PCBs |  | 10d | 2024-05-28 | 2024-06-10 | 36 |  |  |  |  |
| 38 | 3.15 | Solder 2nd PCBs |  | 10d | 2024-06-11 | 2024-06-24 | 37 |  |  |  |  |
| 39 | 3.16 | Test 2nd PCBs |  | 5d | 2024-06-25 | 2024-07-01 | 38 |  |  |  |  |
| 40 | 3.17 | Mem neurons | milestone | 0d | 2024-07-02 | 2024-07-02 | 39 |  |  |  |  |

| ID | WBS | Task | Type | Duration | Start | Finish | Predecessors |
| --- | --- | --- | --- | --- | --- | --- | --- |
| 41 | 4 | **Neurons+mems integration** |  | 65d | 2024-07-02 | 2024-09-30 | 1, 12, 23 |
| 42 | 4.1 | deliver mem neurons |  | 20d | 2024-07-02 | 2024-07-29 |  |
| 43 | 4.2 | integrate 1 neuron + 1 mem |  | 5d | 2024-07-30 | 2024-08-05 | 42 |
| 44 | 4.3 | test integration 1n + 1m |  | 5d | 2024-08-06 | 2024-08-12 | 43 |
| 45 | 4.4 | integrate 1 RG 4 neurons |  | 5d | 2024-08-13 | 2024-08-19 | 44 |
| 46 | 4.5 | test integrated RG |  | 10d | 2024-08-20 | 2024-09-02 | 45 |
| 47 | 4.6 | integrate 1 leg |  | 5d | 2024-09-03 | 2024-09-09 | 46 |
| 48 | 4.7 | test 1 leg |  | 5d | 2024-09-10 | 2024-09-16 | 47 |
| 49 | 4.8 | integrate 2 legs |  | 5d | 2024-09-17 | 2024-09-23 | 48 |
| 50 | 4.9 | test 2 legs |  | 5d | 2024-09-24 | 2024-09-30 | 49 |
| 51 | 4.10 | integrated mem CPG | milestone | 0d | 2024-10-01 | 2024-10-01 | 50 |
| 52 | 5 | **Rat validation** |  | 33d | 2024-10-01 | 2024-11-15 | 41 |
| 53 | 5.1 | deliver mem CPG |  | 20d | 2024-10-01 | 2024-10-28 |  |
| 54 | 5.2 | test mem CPG |  | 5d | 2024-10-29 | 2024-11-04 | 53 |
| 55 | 5.3 | integrate outs F+E |  | 3d | 2024-11-05 | 2024-11-07 | 54 |
| 56 | 5.4 | validate outs on rat |  | 5d | 2024-11-08 | 2024-11-15 | 55 |
| 57 | 5.5 | validated mem CPG | milestone | 0d | 2024-11-18 | 2024-11-18 | 56 |
