# mem spinal cord project

Schedule from GanttProject, 2023-11-22 to 2024-02-13.
Holidays every year on 01-01, 01-02, 01-07, 02-15, 02-16, 05-01, 05-02, 11-11

## Calendars

- Project calendar: Mon-Fri working; Sat-Sun off.

## Schedule

| ID | WBS | Task | Type | Duration | Start | Finish | Predecessors |
| --- | --- | --- | --- | --- | --- | --- | --- |
| 1 | 1 | **B-model develpment** |  | 37d | 2023-11-22 | 2024-01-15 |  |
| 2 | 1.1 | Ia STDP fix |  | 10d | 2023-11-22 | 2023-12-05 |  |
| 3 | 1.2 | Cut STDP fix |  | 5d | 2023-12-06 | 2023-12-12 | 2 |
| 4 | 1.3 | BS->F STDP |  | 2d | 2023-12-13 | 2023-12-14 | 3 |
| 5 | 1.4 | BS->E STDP |  | 1d | 2023-12-15 | 2023-12-15 | 4 |
| 6 | 1.5 | Add 2nd leg |  | 1d | 2023-12-18 | 2023-12-18 | 3, 4, 5 |
| 7 | 1.6 | Commisural projections |  | 1d | 2023-12-19 | 2023-12-19 | 6 |
| 8 | 1.7 | Balance legs |  | 2d | 2023-12-20 | 2023-12-21 | 7 |
| 9 | 1.8 | Debug 2 legs |  | 5d | 2023-12-22 | 2023-12-28 | 8 |
| 10 | 1.9 | Debug STDP complete model |  | 10d | 2023-12-29 | 2024-01-15 | 9 |
| 11 | 1.10 | Complete B-model | milestone | 0d | 2024-01-16 | 2024-01-16 | 10 |
| 12 | 2 | **Memristors** |  | 57d | 2023-11-22 | 2024-02-12 |  |
| 13 | 2.1 | 1 memristor |  | 2d | 2023-11-22 | 2023-11-23 |  |
| 14 | 2.2 | 1 memristor test |  | 5d | 2023-11-24 | 2023-11-30 | 13 |
| 15 | 2.3 | 8 mem fubrication (E) |  | 5d | 2023-12-01 | 2023-12-07 | 14 |
| 16 | 2.4 | 8 mem test (E) |  | 10d | 2023-12-08 | 2023-12-21 | 15 |
| 17 | 2.5 | + 12 mem fubrication |  | 5d | 2023-12-22 | 2023-12-28 | 16 |
| 18 | 2.6 | 20 mem test (F+E) |  | 10d | 2023-12-29 | 2024-01-15 | 17 |
| 19 | 2.7 | 40 mems fubrication |  | 5d | 2024-01-16 | 2024-01-22 | 18 |
| 20 | 2.8 | 40 mems test |  | 15d | 2024-01-23 | 2024-02-12 | 19 |
| 21 | 2.9 | 40 mems (2 legs) | milestone | 0d | 2024-02-13 | 2024-02-13 | 20 |
| 22 | 3 | **Mem neurons** |  | 35d | 2023-11-27 | 2024-01-16 |  |
| 23 | 3.1 | Rework mem neuron sch |  | 10d | 2023-11-27 | 2023-12-08 |  |
| 24 | 3.2 | Design E neurons |  | 5d | 2023-12-11 | 2023-12-15 | 23 |
| 25 | 3.3 | Design F neurons |  | 5d | 2023-12-18 | 2023-12-22 | 24 |
| 26 | 3.4 | Design InE, InF |  | 5d | 2023-12-25 | 2023-12-29 | 25 |
| 27 | 3.5 | Design 2nd leg |  | 10d | 2024-01-03 | 2024-01-16 | 26 |
